task_id,task_name,discipline,responsible_team,baseline_start,baseline_finish,actual_start,forecast_finish,percent_complete,baseline_percent_complete,status,predecessor,budget_usd,critical_flag
T01,Mobilization and traffic control setup,Civil,GC Field Team,2026-01-05,2026-01-30,2026-01-05,2026-01-30,100,100,Complete,,650000,Yes
T02,Demolition of existing plaza,Civil,Demolition Subcontractor,2026-02-02,2026-02-27,2026-02-02,2026-03-04,100,100,Complete,T01,1100000,Yes
T03,Storm drainage relocation,Utilities,Utility Subcontractor,2026-03-02,2026-03-27,2026-03-04,2026-04-10,100,100,Complete,T02,1450000,Yes
T04,Water main relocation,Utilities,Utility Subcontractor,2026-03-16,2026-04-17,2026-03-23,2026-04-25,100,100,Complete,T03,1250000,Yes
T05,Gas service relocation,Utilities,Utility Subcontractor,2026-03-30,2026-04-24,2026-04-01,2026-04-27,100,100,Complete,T03,600000,No
T06,Electrical duct bank,Utilities,Electrical Subcontractor,2026-04-06,2026-05-01,2026-04-13,2026-05-20,100,100,Complete,T04,1300000,Yes
T07,Foundation excavation,Structures,GC Field Team,2026-05-04,2026-05-22,2026-05-18,2026-06-05,100,100,Complete,T06,900000,Yes
T08,Canopy foundations,Structures,Concrete Subcontractor,2026-05-25,2026-06-12,2026-06-08,2026-06-30,100,100,Complete,T07,1500000,Yes
T09,Steel canopy erection,Structures,Steel Erector,2026-06-15,2026-07-24,2026-07-01,2026-08-18,84,100,In Progress,T08,2600000,Yes
T10,Lighting and low-voltage systems,Electrical,Electrical Subcontractor,2026-07-06,2026-08-14,2026-07-20,2026-09-12,65,100,In Progress,T09,1700000,No
T11,Plaza paving and finishes,Civil,Paving Subcontractor,2026-07-20,2026-09-11,2026-08-03,2026-10-03,62,90,In Progress,T09,2200000,Yes
T12,Landscaping and site furniture,Architectural,Landscape Subcontractor,2026-08-17,2026-09-25,2026-08-24,2026-10-10,28,50,In Progress,T11,1150000,No
T13,Testing and commissioning,Commissioning,Commissioning Agent,2026-09-14,2026-10-23,,2026-11-14,0,0,Not Started,T10,900000,Yes
T14,Final punch and turnover,Closeout,GC Project Team,2026-10-26,2026-12-18,,2026-12-30,0,0,Not Started,T13,500000,Yes
